# Vitrina - Plataforma SaaS de e-commerce + marketing

Schedule from MS Project XML, 2026-01-05 to 2026-09-04, status date 2026-03-04, costs in $, A marks actual dates.

## Calendars

- Standard: Mon-Fri 08:00-12:00, 13:00-17:00; Sat-Sun off.

## Resources

| Resource | Rate |
| --- | --- |
| Líder de Proyecto (PM) | 30 |
| Product Owner / Analista | 26 |
| Diseñador/a UX-UI | 22 |
| Desarrollador/a Senior | 35 |
| Desarrollador/a Semi-Senior | 24 |
| QA / Tester | 20 |
| Especialista de Marketing | 22 |
| Customer Success / Soporte | 18 |
| Asesor/a Legal-Compliance | 40 |
| Equipamiento / Hardware (import.) |  |
| Licencias de software |  |
| Infraestructura cloud |  |
| Campañas de Ads (Meta/Google) |  |
| Setup pasarela de pagos |  |
| Servicios legales externos |  |

## Schedule

| ID | WBS | Task | Type | Duration | Start | Finish | Predecessors | Complete | Remaining | Actual finish | Baseline start | Baseline finish | Baseline duration | Resources | Work | Cost | Baseline cost |
| --- | --- | --- | --- | --- | --- | --- | --- | --- | --- | --- | --- | --- | --- | --- | --- | --- | --- |
| 1 | 1 | **Fase 1 - Discovery y Diseño** |  | 0d | 2026-01-05 | 2026-02-25 |  |  |  |  | 2026-01-05 | 2026-02-25 |  |  |  |  | 19,320 |
| 2 | 1.1 | Kick-off y plan de proyecto |  | 3d | 2026-01-05 A | 2026-01-07 A |  | 100% |  |  | 2026-01-05 | 2026-01-07 | 3d | Líder de Proyecto (PM) | 24h | 720 | 720 |
| 3 | 1.2 | Compra anticipada de equipamiento (mitiga arancel) |  | 2d | 2026-01-08 A | 2026-01-09 A | 2 | 100% |  |  | 2026-01-08 | 2026-01-09 | 2d | Líder de Proyecto (PM) [30%]; Equipamiento / Hardware (import.); Licencias de software | 4.8h | 8,424 | 7,344 |
| 4 | 1.3 | Investigación de mercado y usuarios |  | 10d | 2026-01-08 A | 2026-01-21 A | 2 | 100% |  |  | 2026-01-08 | 2026-01-21 | 10d | Product Owner / Analista; Especialista de Marketing [50%] | 120h | 2,960 | 2,960 |
| 5 | 1.4 | Definición de alcance y requisitos |  | 6d | 2026-01-22 A | 2026-01-29 A | 4 | 100% |  |  | 2026-01-22 | 2026-01-29 | 6d | Product Owner / Analista; Líder de Proyecto (PM) [50%] | 72h | 1,968 | 1,968 |
| 6 | 1.5 | Diseño UX/UI y prototipo |  | 18d | 2026-01-30 A | 2026-02-24 A | 5 | 100% |  |  | 2026-01-30 | 2026-02-24 | 18d | Diseñador/a UX-UI | 144h | 3,168 | 3,168 |
| 7 | 1.6 | Arquitectura y stack técnico |  | 8d | 2026-01-30 A | 2026-02-10 A | 5 | 100% |  |  | 2026-01-30 | 2026-02-10 | 8d | Desarrollador/a Senior | 64h | 2,576 | 2,240 |
| 8 | 1.7 | Documentación técnica y plan de backup de perfil clave |  | 5d | 2026-02-11 A | 2026-02-17 A | 7 | 100% |  |  | 2026-02-11 | 2026-02-17 | 5d | Desarrollador/a Senior [40%]; Líder de Proyecto (PM) [30%] | 28h | 1,004 | 920 |
| 9 | 1.8 | Hito: Diseño aprobado | milestone | 0d | 2026-02-25 A | 2026-02-25 A | 6, 7 | 100% |  |  | 2026-02-25 | 2026-02-25 |  |  |  |  |  |
| 10 | 2 | **Fase 2 - Desarrollo del MVP** |  | 0d | 2026-02-26 | 2026-05-20 |  |  |  |  | 2026-02-26 | 2026-06-17 |  |  |  |  | 35,760 |
| 11 | 2.1 | Setup de infraestructura cloud |  | 5d | 2026-02-26 A | 2026-03-04 A | 9 | 100% |  |  | 2026-02-26 | 2026-03-04 | 5d | Desarrollador/a Senior; Infraestructura cloud [200%] | 40h | 2,510 | 2,300 |
| 12 | 2.2 | Desarrollo Tienda / Catálogo |  | 16d | 2026-03-05 A | 2026-03-26 | 11 | 100% |  | 2026-04-21 | 2026-03-05 | 2026-04-21 | 34d | Desarrollador/a Senior [70%]; Desarrollador/a Semi-Senior [160%] | 294.4h | 9,258.88 | 11,288 |
| 13 | 2.3 | Integración de Pagos |  | 15d | 2026-03-05 A | 2026-03-25 A | 11 | 100% |  |  | 2026-03-05 | 2026-03-25 | 15d | Desarrollador/a Semi-Senior; Setup pasarela de pagos | 120h | 3,812 | 3,380 |
| 14 | 2.4 | Auditoría de seguridad de pagos |  | 6d | 2026-03-26 A | 2026-04-02 A | 13 | 100% |  |  | 2026-03-26 | 2026-04-02 | 6d | Desarrollador/a Senior [50%]; QA / Tester [50%] | 48h | 1,446 | 1,320 |
| 15 | 2.5 | Integración de Envíos |  | 12d | 2026-03-05 A | 2026-03-20 | 11 | 40% | 7.2d |  | 2026-03-05 | 2026-03-20 | 12d | Desarrollador/a Semi-Senior | 96h | 2,649.6 | 2,304 |
| 16 | 2.6 | Módulo de Marketing integrado |  | 12d | 2026-03-27 | 2026-04-13 | 12 |  |  |  | 2026-04-22 | 2026-05-13 | 16d | Desarrollador/a Semi-Senior [130%]; Especialista de Marketing [50%] | 172.8h | 4,500.48 | 4,480 |
| 17 | 2.7 | Onboarding de reemplazo de desarrollador senior |  | 20d | 2026-03-27 | 2026-04-23 | 12 |  |  |  |  |  |  | Desarrollador/a Senior [50%]; Líder de Proyecto (PM) [20%] | 112h | 4,180 |  |
| 18 | 2.8 | App móvil de gestión |  | 14d | 2026-03-27 | 2026-04-15 | 12 |  |  |  | 2026-04-22 | 2026-05-21 | 22d | Desarrollador/a Senior [50%]; Desarrollador/a Semi-Senior [150%] | 224h | 6,890.8 | 7,304 |
| 19 | 2.9 | QA y pruebas del MVP |  | 12d | 2026-04-24 | 2026-05-11 | 14, 15, 16, 18, 17 |  |  |  | 2026-05-22 | 2026-06-08 | 12d | QA / Tester | 96h | 1,920 | 1,920 |
| 20 | 2.10 | Pruebas de carga y performance |  | 6d | 2026-05-12 | 2026-05-19 | 19 |  |  |  | 2026-06-09 | 2026-06-16 | 6d | QA / Tester; Desarrollador/a Senior [30%] | 62.4h | 1,539.6 | 1,464 |
| 21 | 2.11 | Hito: MVP en producción | milestone | 0d | 2026-05-20 | 2026-05-20 | 20 |  |  |  | 2026-06-17 | 2026-06-17 |  |  |  |  |  |
| 22 | 3 | **Fase 3 - Piloto con Comercios** |  | 0d | 2026-05-21 | 2026-07-22 |  |  |  |  | 2026-06-18 | 2026-09-14 |  |  |  |  | 15,106 |
| 23 | 3.1 | Reclutamiento de comercios piloto |  | 8d | 2026-05-21 | 2026-06-01 | 21 |  |  |  | 2026-06-18 | 2026-06-29 | 8d | Especialista de Marketing; Customer Success / Soporte [50%] | 96h | 1,984 | 1,984 |
| 24 | 3.2 | Onboarding y capacitación |  | 10d | 2026-06-02 | 2026-06-15 | 23 |  |  |  | 2026-06-30 | 2026-07-15 | 12d | Customer Success / Soporte; Infraestructura cloud | 80h | 1,890 | 2,178 |
| 25 | 3.3 | Soporte y monitoreo del piloto |  | 26d | 2026-06-16 | 2026-07-21 | 24 |  |  |  | 2026-07-16 | 2026-09-11 | 42d | Customer Success / Soporte | 208h | 3,744 | 6,048 |
| 26 | 3.4 | Ajustes de producto según feedback |  | 12d | 2026-06-16 | 2026-07-01 | 24 |  |  |  | 2026-07-16 | 2026-08-10 | 18d | Desarrollador/a Semi-Senior; QA / Tester [50%] | 144h | 3,609.6 | 4,896 |
| 27 | 3.5 | Hito: Piloto validado | milestone | 0d | 2026-07-22 | 2026-07-22 | 25, 26 |  |  |  | 2026-09-14 | 2026-09-14 |  |  |  |  |  |

| ID | WBS | Task | Type | Duration | Start | Finish | Predecessors | Baseline start | Baseline finish | Baseline duration | Resources | Work | Cost | Baseline cost |
| --- | --- | --- | --- | --- | --- | --- | --- | --- | --- | --- | --- | --- | --- | --- |
| 28 | 4 | **Fase 4 - Lanzamiento y Escala** |  | 0d | 2026-06-16 | 2026-09-04 |  | 2026-09-15 | 2026-11-04 |  |  |  |  | 28,252 |
| 29 | 4.1 | Preparación de lanzamiento |  | 6d | 2026-06-16 | 2026-06-23 | 24 | 2026-09-15 | 2026-09-28 | 10d | Líder de Proyecto (PM) [50%]; Especialista de Marketing | 72h | 1,776 | 2,960 |
| 30 | 4.2 | Escalado de infraestructura |  | 8d | 2026-06-16 | 2026-06-25 | 24 | 2026-09-15 | 2026-09-30 | 12d | Desarrollador/a Senior; Infraestructura cloud [200%] | 64h | 3,476 | 4,260 |
| 31 | 4.3 | Campañas de adquisición |  | 16d | 2026-06-24 | 2026-07-15 | 29 | 2026-09-29 | 2026-11-02 | 25d | Especialista de Marketing [140%]; Campañas de Ads (Meta/Google) | 179.2h | 11,942.4 | 12,400 |
| 32 | 4.4 | Optimización y features premium |  | 44d | 2026-06-24 | 2026-08-24 | 29 | 2026-09-29 | 2026-11-03 | 26d | Desarrollador/a Senior [55%]; Desarrollador/a Semi-Senior [115%] | 598.4h | 18,964.88 | 8,632 |
| 33 | 4.5 | Auditoría de compliance regulatorio (pre-lanzamiento) |  | 8d | 2026-08-25 | 2026-09-03 | 32 |  |  |  | Asesor/a Legal-Compliance; Servicios legales externos | 64h | 4,560 |  |
| 34 | 4.6 | Hito: Lanzamiento comercial | milestone | 0d | 2026-09-04 | 2026-09-04 | 31, 32, 30, 33 | 2026-11-04 | 2026-11-04 |  |  |  |  |  |
